# DA Marcel

Schedule from MS Project, 2008-07-01 to 2008-11-10, A marks actual dates.
Hewlett-Packard

## Calendars

- Standard: Mon-Fri 08:00-12:00, 13:00-17:00; Sat-Sun off. Exceptions (off unless hours are given): 2008-08-23 08:00-12:00, 13:00-17:00, 2008-10-05 08:00-12:00, 13:00-17:00.

## Resources

| Resource |
| --- |
| Marcel Suter |
| SWS/Experte |
| Betreuer |

## Schedule

| ID | WBS | Task | Type | Duration | Start | Finish | Predecessors | Complete | Remaining | Total slack | Free slack | Constraint | Resources | Work | Actual work |
| --- | --- | --- | --- | --- | --- | --- | --- | --- | --- | --- | --- | --- | --- | --- | --- |
| 1 | 1 | **Themensuche** |  | 30d | 2008-07-01 08:00 A | 2008-08-11 17:00 A |  | 100% |  |  |  |  |  | 14.4h | 14.4h |
| 2 | 1.1 | **Firma** |  | 30d | 2008-07-01 08:00 A | 2008-08-11 17:00 A |  | 100% |  |  |  |  |  | 9.6h | 9.6h |
| 3 | 1.1.1 | Anfrage |  | 1d | 2008-07-01 08:00 A | 2008-07-07 12:00 A |  | 100% |  |  |  | start no earlier than 2008-07-01 08:00 | Marcel Suter [30%] | 2.4h | 2.4h |
| 4 | 1.1.2 | Bewertung der Vorschläge |  | 1d | 2008-07-29 08:00 A | 2008-08-04 12:00 A | 3 | 100% |  |  |  | start no earlier than 2008-07-29 08:00 | Marcel Suter [30%] | 2.4h | 2.4h |
| 5 | 1.1.3 | Besprechung einzelner Vorschläge |  | 2d | 2008-08-04 13:00 A | 2008-08-11 17:00 A | 4 | 100% |  |  |  |  | Marcel Suter [30%] | 4.8h | 4.8h |
| 6 | 1.2 | **Eigene Vorschläge** |  | 8d | 2008-07-22 08:00 A | 2008-07-31 17:00 A |  | 100% |  |  |  |  |  | 4.8h | 4.8h |
| 7 | 1.2.1 | erarbeiten |  | 2d | 2008-07-22 08:00 A | 2008-07-31 17:00 A |  | 100% |  |  |  | finish no earlier than 2008-07-31 17:00 | Marcel Suter [30%] | 4.8h | 4.8h |
| 8 | 1.3 | Entscheid für eine Arbeit | milestone | 0d | 2008-08-11 17:00 A | 2008-08-11 17:00 A | 7, 5 | 100% |  |  |  | start no earlier than 2008-08-06 08:00 | Marcel Suter [30%] |  |  |
| 9 | 2 | **Themeneingabe** |  | 20d | 2008-08-12 08:00 A | 2008-09-08 08:00 |  | 50% | 10d | 0d |  |  |  | 2.4h | 1.2h |
| 10 | 2.1 | erarbeiten |  | 1d | 2008-08-12 08:00 A | 2008-08-18 12:00 | 8 | 50% | 0.5d | 12d | 5.5d | start no earlier than 2008-08-07 08:00 | Marcel Suter [30%] | 2.4h | 1.2h |
| 11 | 2.2 | abgeben | milestone | 0d | 2008-08-25 08:00 | 2008-08-25 08:00 | 10 |  |  | 10d |  | start no earlier than 2008-08-25 08:00 | Marcel Suter [30%] |  |  |
| 12 | 2.3 | Themenzulassung | milestone | 0d | 2008-09-08 08:00 | 2008-09-08 08:00 | 11 |  |  | 0d |  | start no earlier than 2008-09-08 08:00 | SWS/Experte |  |  |
| 13 | 3 | **Vorprojekt** |  | 46.17d | 2008-09-08 08:00 | 2008-11-10 09:20 |  |  |  | 0d |  |  |  | 35.2h |  |
| 14 | 3.1 | **Technologie-Evaluation** |  | 46.17d | 2008-09-08 08:00 | 2008-11-10 09:20 |  |  |  | 0d |  |  |  | 35.2h |  |
| 15 | 3.1.1 | **GPS im Zug** |  | 1.5d | 2008-09-08 08:00 | 2008-09-09 12:00 |  |  |  | 0d |  |  |  | 3.6h |  |
| 16 | 3.1.1.1 | Gerät beschaffen |  | 0.5d | 2008-09-08 08:00 | 2008-09-08 12:00 | 12 |  |  | 0d |  |  | Marcel Suter [30%] | 1.2h |  |
| 17 | 3.1.1.2 | Testfahrt |  | 0.5d | 2008-09-08 13:00 | 2008-09-08 17:00 | 16 |  |  | 0d |  |  | Marcel Suter [30%] | 1.2h |  |
| 18 | 3.1.1.3 | Bewerten |  | 0.5d | 2008-09-09 08:00 | 2008-09-09 12:00 | 17 |  |  | 0d |  |  | Marcel Suter [30%] | 1.2h |  |
| 19 | 3.1.2 | **Trägheitsnavigation** |  | 10d | 2008-09-22 13:00 | 2008-10-05 12:00 |  |  |  | 0d |  |  |  | 7.2h |  |
| 20 | 3.1.2.1 | Technologie studieren |  | 1d | 2008-09-22 13:00 | 2008-09-23 12:00 | 12, 29 |  |  | 0d |  |  | Marcel Suter [30%] | 2.4h |  |
| 21 | 3.1.2.2 | Gerät evaluieren |  | 0.5d | 2008-09-29 08:00 | 2008-09-29 12:00 | 20 |  |  | 0d |  |  | Marcel Suter [30%] | 1.2h |  |
| 22 | 3.1.2.3 | Gerät beschaffen |  | 0.5d | 2008-09-29 13:00 | 2008-09-29 17:00 | 21 |  |  | 0d |  |  | Marcel Suter [30%] | 1.2h |  |
| 23 | 3.1.2.4 | Testfahrt |  | 0.5d | 2008-09-30 08:00 | 2008-09-30 12:00 | 22 |  |  | 0d |  |  | Marcel Suter [30%] | 1.2h |  |
| 24 | 3.1.2.5 | Bewerten |  | 0.5d | 2008-10-05 08:00 | 2008-10-05 12:00 | 23 |  |  | 0d |  |  | Marcel Suter [30%] | 1.2h |  |

Notes:
- 10: Still in Progress, Dat is on stick

| ID | WBS | Task | Type | Duration | Start | Finish | Predecessors | Total slack | Constraint | Resources | Work |
| --- | --- | --- | --- | --- | --- | --- | --- | --- | --- | --- | --- |
| 25 | 3.1.3 | **WLAN** |  | 5.5d | 2008-09-15 08:00 | 2008-09-22 12:00 |  | 0d |  |  | 4.8h |
| 26 | 3.1.3.1 | Library für Scannen evaluieren |  | 0.5d | 2008-09-15 08:00 | 2008-09-15 12:00 | 12, 18 | 0d |  | Marcel Suter [30%] | 1.2h |
| 27 | 3.1.3.2 | Testequipment für Messfahrt bereitstellen |  | 0.5d | 2008-09-15 13:00 | 2008-09-15 17:00 | 26 | 0d |  | Marcel Suter [30%] | 1.2h |
| 28 | 3.1.3.3 | Testfahrt |  | 0.5d | 2008-09-16 08:00 | 2008-09-16 12:00 | 27 | 0d |  | Marcel Suter [30%] | 1.2h |
| 29 | 3.1.3.4 | Bewerten |  | 0.5d | 2008-09-22 08:00 | 2008-09-22 12:00 | 28 | 0d |  | Marcel Suter [30%] | 1.2h |
| 30 | 3.1.4 | **Gyro** |  | 6.5d | 2008-10-05 13:00 | 2008-10-13 17:00 |  | 0d |  |  | 7.2h |
| 31 | 3.1.4.1 | Technologie studieren |  | 1d | 2008-10-05 13:00 | 2008-10-06 12:00 | 12, 24 | 0d |  | Marcel Suter [30%] | 2.4h |
| 32 | 3.1.4.2 | Gerät evaluieren |  | 0.5d | 2008-10-06 13:00 | 2008-10-06 17:00 | 31 | 0d |  | Marcel Suter [30%] | 1.2h |
| 33 | 3.1.4.3 | Gerät beschaffen |  | 0.5d | 2008-10-07 08:00 | 2008-10-07 12:00 | 32 | 0d |  | Marcel Suter [30%] | 1.2h |
| 34 | 3.1.4.4 | Testfahrt |  | 0.5d | 2008-10-13 08:00 | 2008-10-13 12:00 | 33 | 0d |  | Marcel Suter [30%] | 1.2h |
| 35 | 3.1.4.5 | Bewerten |  | 0.5d | 2008-10-13 13:00 | 2008-10-13 17:00 | 34 | 0d |  | Marcel Suter [30%] | 1.2h |
| 36 | 3.1.5 | **Strecken-Datenbank** |  | 14.67d | 2008-10-14 08:00 | 2008-11-03 14:20 |  | 0d |  |  | 10h |
| 37 | 3.1.5.1 | Datenbank auffinden |  | 1.67d | 2008-10-14 08:00 | 2008-10-21 09:20 | 12, 35 | 0d |  | Marcel Suter [30%] | 4h |
| 38 | 3.1.5.2 | Datenmodell studieren |  | 1d | 2008-10-21 09:20 | 2008-10-27 14:20 | 37 | 0d |  | Marcel Suter [30%] | 2.4h |
| 39 | 3.1.5.3 | Möglichkeit der Portierung auf Laptop prüfen |  | 1d | 2008-10-27 14:20 | 2008-11-03 09:20 | 38 | 0d |  | Marcel Suter [30%] | 2.4h |
| 40 | 3.1.5.4 | Bewerten |  | 0.5d | 2008-11-03 09:20 | 2008-11-03 14:20 | 39 | 0d |  | Marcel Suter [30%] | 1.2h |
| 41 | 3.1.6 | **Evaluation der Technologien** |  | 4.5d | 2008-11-03 14:20 | 2008-11-10 09:20 |  | 0d |  |  | 2.4h |
| 42 | 3.1.6.1 | Evaluation, Bericht schreiben |  | 1d | 2008-11-03 14:20 | 2008-11-10 09:20 | 40 | 0d |  | Marcel Suter [30%] | 2.4h |
| 43 | 4 | Start Diplomarbeit | milestone | 0d | 2008-11-10 09:20 | 2008-11-10 09:20 | 42 | 0d | start no earlier than 2008-10-06 08:00 |  |  |
